# OJTFU_K2_DetailedPlan_Portlet_v0.3

How a schedule from MS Project changed from version to version. A marks actual dates.

## Version 1 (saved 2012-05-24)

| ID | WBS | Task | Duration | Start | Finish | Predecessors | Total float | Constraint |
| --- | --- | --- | --- | --- | --- | --- | --- | --- |
| 1 | 1 | **OOPMS** | 76d | 2012-05-07 | 2012-08-20 |  | 0d |  |
| 2 | 1.1 | **Initiation** | 2d | 2012-05-07 | 2012-05-08 |  | 0d |  |
| 3 |  | Kick-off meeting | 1d | 2012-05-07 | 2012-05-07 |  | 0d | start no earlier than 2012-05-07 |
| 4 |  | Introduce overview about Eclipse plug-in development | 4h | 2012-05-08 | 2012-05-08 | 3 | 0d |  |
| 5 |  | Introduce overview about Android development | 4h | 2012-05-08 | 2012-05-08 | 4 | 0d |  |
| 6 | 1.2 | **Planning** | 5d | 2012-05-09 | 2012-05-15 | 2 | 0d |  |
| 7 |  | Develop scope statement | 3d | 2012-05-09 | 2012-05-11 |  | 0d |  |
| 8 |  | Create WBS | 2d | 2012-05-09 | 2012-05-10 |  | 3d |  |
| 9 |  | Develop and refine other plans | 2d | 2012-05-14 | 2012-05-15 | 7 | 0d |  |
| 10 | 1.3 | **Solution** | 28d | 2012-05-16 | 2012-06-22 |  | 0d |  |
| 11 |  | Report 1 | 4d | 2012-05-16 | 2012-05-21 | 6 | 0d |  |
| 12 |  | Study Requirements + Report 2 | 4d | 2012-05-22 | 2012-05-25 | 11 | 0d |  |
| 13 | 1.3.3 | **Develop functional specifications** | 5d | 2012-05-28 | 2012-06-01 |  | 0d |  |
| 14 |  | Create SRS | 5d | 2012-05-28 | 2012-06-01 | 12 | 0d | start no earlier than 2012-05-10 |
| 15 | 1.3.4 | **Develop prototype based on functional specifications** | 13d | 2012-06-04 | 2012-06-20 | 14 | 0d |  |
| 16 |  | Database Design | 5d | 2012-06-04 | 2012-06-08 |  | 0d |  |
| 17 |  | ScreenDesign | 2d | 2012-06-11 | 2012-06-12 | 16 | 0d | finish no earlier than 2011-05-20 |
| 18 |  | Activity Diagram | 2d | 2012-06-13 | 2012-06-14 | 17 | 0d | start no earlier than 2011-05-20 |
| 19 |  | Sequence Diagram | 2d | 2012-06-15 | 2012-06-18 | 18 | 0d | start no earlier than 2011-05-20 |
| 20 |  | DDD | 2d | 2012-06-19 | 2012-06-20 | 19 | 0d | start no earlier than 2011-05-20 |
| 21 |  | Review functional specifications (Offline) | 1d | 2012-06-21 | 2012-06-21 | 20 | 0d | start no earlier than 2011-05-23 |
| 22 |  | Assess Understand the requirement | 1d | 2012-06-22 | 2012-06-22 | 21 | 0d |  |
| 23 | 1.4 | **Construction** | 36d | 2012-06-25 | 2012-08-13 | 10 | 0d |  |
| 24 | 1.4.1 | **Development** | 24.5d | 2012-06-25 | 2012-07-27 |  | 0d |  |
| 25 |  | Create coding plan | 4h | 2012-06-25 | 2012-06-25 |  | 0d |  |
| 26 | 1.4.1.2 | **Development** | 16d | 2012-06-25 | 2012-07-17 | 25 | 0d |  |
| 27 | 1.4.1.2.1 | **Screen design** | 5d | 2012-06-25 | 2012-07-02 |  | 0d |  |
| 28 |  | Pages (Requirement, Portal) | 3d | 2012-06-25 | 2012-06-28 |  | 34.5d |  |
| 29 |  | Pages (DMS, Timesheet) | 3d | 2012-06-25 | 2012-06-28 |  | 34.5d |  |
| 30 |  | Pages (Project Eyes, Admin, Product) | 3d | 2012-06-25 | 2012-06-28 |  | 34.5d |  |
| 31 |  | Pages (Report, Dashboard, Planner) | 3d | 2012-06-25 | 2012-06-28 |  | 0d |  |
| 32 |  | Review Pages | 2d | 2012-06-28 | 2012-07-02 | 31 | 0d |  |
| 33 |  | Database Design, Pages review, mapping | 2d | 2012-07-02 | 2012-07-04 | 32 | 0d |  |
| 34 | 1.4.1.2.3 | **Functions code** | 9d | 2012-07-04 | 2012-07-17 | 33 | 0d |  |
| 35 |  | Function 1 Requirement | 3d | 2012-07-04 | 2012-07-09 |  | 0d |  |
| 36 |  | Function 2 DMS | 3d | 2012-07-04 | 2012-07-09 |  | 23.5d |  |
| 37 |  | Function 3 Admin | 3d | 2012-07-04 | 2012-07-09 |  | 23.5d |  |
| 38 |  | Function 4 Dashboard | 3d | 2012-07-04 | 2012-07-09 |  | 23.5d |  |
| 39 |  | Function 5 Portal | 4d | 2012-07-09 | 2012-07-13 | 35 | 0d |  |
| 40 |  | Function 6 Timesheet | 4d | 2012-07-09 | 2012-07-13 | 36 | 23.5d |  |
| 41 |  | Function 7 Admin, Product | 4d | 2012-07-09 | 2012-07-13 | 37 | 23.5d |  |
| 42 |  | Function 8 Planner, Report | 4d | 2012-07-09 | 2012-07-13 | 38 | 23.5d |  |
| 43 |  | Function 9 Dashboard, Project Eye | 2d | 2012-07-13 | 2012-07-17 | 39 | 21.5d |  |
| 44 |  | Function 10 Planner, Report | 2d | 2012-07-13 | 2012-07-17 | 39 | 0d |  |
| 45 |  | Review code offline | 1d | 2012-07-17 | 2012-07-18 | 44 | 0d |  |
| 46 |  | Modify if needed | 1d | 2012-07-18 | 2012-07-19 | 45 | 0d |  |
| 47 |  | Integration | 2d | 2012-07-19 | 2012-07-23 | 46 | 0d |  |
| 48 |  | Study and develop Android Version | 4d | 2012-07-23 | 2012-07-27 | 47 | 0d |  |
| 49 | 1.4.2 | **Testing** | 11.5d | 2012-07-27 | 2012-08-13 | 48 | 0d |  |
| 50 |  | Create Testing plan | 4h | 2012-07-27 | 2012-07-27 |  | 0d | start no earlier than 2011-05-30 |
| 51 | 1.4.2.2 | **Unit Testing** | 5.5d | 2012-07-30 | 2012-08-06 |  | 0d |  |
| 52 |  | Create Test case | 1d | 2012-07-30 | 2012-07-30 | 50 | 0d |  |
| 53 |  | Review test case online | 1d | 2012-07-31 | 2012-07-31 | 52 | 0d |  |
| 54 |  | Create Test code | 1d | 2012-08-01 | 2012-08-01 | 53 | 0d |  |
| 55 |  | Review Test code and Unit Test Statistical Report | 4h | 2012-08-02 | 2012-08-02 | 54 | 0d |  |
| 56 |  | Modify code (fix bug, if any) | 1d | 2012-08-02 | 2012-08-03 | 55 | 0d |  |
| 57 |  | Re-test modified code | 4h | 2012-08-03 | 2012-08-03 | 56 | 0d |  |
| 58 |  | Assess Unit Testing (Write Test Case, Test Code, Test Report) | 4h | 2012-08-06 | 2012-08-06 | 57 | 0d |  |
| 59 | 1.4.2.3 | **Integration Testing** | 5.5d | 2012-08-06 | 2012-08-13 |  | 0d |  |
| 60 |  | Create Test case | 1d | 2012-08-06 | 2012-08-07 | 47, 58 | 0d |  |
| 61 |  | Review test case online | 1d | 2012-08-07 | 2012-08-08 | 60 | 0d |  |
| 62 |  | Create Test code | 1d | 2012-08-08 | 2012-08-09 | 61 | 0d |  |
| 63 |  | Review Test code and Unit Test Statistical Report | 4h | 2012-08-09 | 2012-08-09 | 62 | 0d |  |
| 64 |  | Modify code (fix bug, if any) | 1d | 2012-08-10 | 2012-08-10 | 63 | 0d |  |
| 65 |  | Re-test modified code | 4h | 2012-08-13 | 2012-08-13 | 64 | 0d |  |
| 66 |  | Assess Unit Testing (Write Test Case, Test Code, Test Report) | 4h | 2012-08-13 | 2012-08-13 | 65 | 0d |  |
| 67 |  | Monitoring and Controlling | 63d | 2012-05-16 | 2012-08-10 | 6 | 6d | start no earlier than 2012-03-16 |
| 68 | 1.6 | **Termination** | 5d | 2012-08-14 | 2012-08-20 | 23 | 0d |  |
| 69 |  | Milestone assessment | 2d | 2012-08-14 | 2012-08-15 |  | 0d |  |
| 70 |  | Deployment | 3d | 2012-08-16 | 2012-08-20 | 69 | 0d |  |

## Version 2 (saved 2012-08-05)

Note of the change: update plan detail

Last finish 2012-08-20 → 2012-08-21 (+1d). Complete tasks 0 → 25.

Added:

| ID | Task | Duration | Start | Finish | Predecessors |
| --- | --- | --- | --- | --- | --- |
| 46 | Review to update/fix bug for final documents | 1d | 2012-07-18 A | 2012-07-19 | 45 |

Changed:

| ID | Task | Start | Finish | Duration | Complete | Total float | Predecessors | Other |
| --- | --- | --- | --- | --- | --- | --- | --- | --- |
| 1 | **OOPMS** | 2012-05-07 A | 2012-08-20 → 2012-08-21 (+1d) | 76d → 76.85d | 0% → 70% |  |  |  |
| 2 | **Initiation** | 2012-05-07 A | 2012-05-08 A |  | 0% → 100% | 0d → none |  |  |
| 3 | Kick-off meeting | 2012-05-07 A | 2012-05-07 A |  | 0% → 100% | 0d → none |  |  |
| 4 | Introduce overview about Eclipse plug-in development | 2012-05-08 A | 2012-05-08 A |  | 0% → 100% | 0d → none |  |  |
| 5 | Introduce overview about Android development | 2012-05-08 A | 2012-05-08 A |  | 0% → 100% | 0d → none |  |  |
| 6 | **Planning** | 2012-05-09 A | 2012-05-15 A |  | 0% → 100% | 0d → none |  |  |
| 7 | Develop scope statement | 2012-05-09 A | 2012-05-11 A |  | 0% → 100% | 0d → none |  |  |
| 8 | Create WBS | 2012-05-09 A | 2012-05-10 A |  | 0% → 100% | 3d → none |  |  |
| 9 | Develop and refine other plans | 2012-05-14 A | 2012-05-15 A |  | 0% → 100% | 0d → none |  |  |
| 10 | **Solution** | 2012-05-16 A |  |  | 0% → 92% | 0d → 9d |  |  |
| 11 | Report 1 | 2012-05-16 A | 2012-05-21 A |  | 0% → 100% | 0d → none |  |  |
| 12 | Study Requirements + Report 2 | 2012-05-22 A | 2012-05-25 A |  | 0% → 100% | 0d → none |  |  |
| 13 | **Develop functional specifications** | 2012-05-28 A |  |  | 0% → 90% | 0d → 22.25d |  |  |
| 14 | Create SRS | 2012-05-28 A |  |  | 0% → 90% | 0d → 22.25d |  |  |
| 15 | **Develop prototype based on functional specifications** | 2012-06-04 A |  |  | 0% → 87% | 0d → 11d |  |  |
| 16 | Database Design | 2012-06-04 A |  |  | 0% → 85% | 0d → 18d |  |  |
| 17 | ScreenDesign | 2012-06-11 A |  |  | 0% → 85% | 0d → 16.3d |  |  |
| 18 | Activity Diagram | 2012-06-13 A |  |  | 0% → 90% | 0d → 14.5d |  |  |
| 19 | Sequence Diagram | 2012-06-15 A |  |  | 0% → 90% | 0d → 12.7d |  |  |
| 20 | DDD | 2012-06-19 A |  |  | 0% → 85% | 0d → 11d |  |  |
| 21 | Review functional specifications (Offline) | 2012-06-21 A | 2012-06-21 A |  | 0% → 100% | 0d → none |  |  |
| 22 | Assess Understand the requirement | 2012-06-22 A | 2012-06-22 A |  | 0% → 100% | 0d → none |  |  |
| 23 | **Construction** | 2012-06-25 A | 2012-08-13 → 2012-08-14 (+1d) | 36d → 36.85d | 0% → 58% |  |  |  |
| 24 | **Development** | 2012-06-25 A | 2012-07-27 → 2012-07-30 (+3d) | 24.5d → 25.5d | 0% → 52% | 0d → 11.35d |  |  |
| 25 | Create coding plan | 2012-06-25 A | 2012-06-25 A |  | 0% → 100% | 0d → none |  |  |
| 26 | **Development** | 2012-06-25 A |  |  | 0% → 49% | 0d → 20.35d |  |  |
| 33 | Database Design, Pages review, mapping | 2012-07-02 A | 2012-07-04 A |  | 0% → 100% | 0d → none |  |  |
| 34 | **Functions code** | 2012-07-04 A |  |  | 0% → 67% | 0d → 20.35d |  |  |
| 35 | Function 1 Requirement | 2012-07-04 A | 2012-07-09 A |  | 0% → 100% | 0d → none |  |  |
| 36 | Function 2 DMS | 2012-07-04 A |  |  | 0% → 30% | 23.5d → 25.15d |  |  |
| 38 | Function 4 Dashboard | 2012-07-04 A |  |  | 0% → 25% | 23.5d → 26.15d |  |  |
| 39 | Function 5 Portal | 2012-07-09 A |  |  | 0% → 90% | 0d → 11.44d |  |  |
| 40 | Function 6 Timesheet | 2012-07-09 A | 2012-07-13 A |  | 0% → 100% | 23.5d → none |  |  |
| 41 | Function 7 Admin, Product | 2012-07-09 A |  |  | 0% → 80% | 23.5d → 22.35d |  |  |
| 42 | Function 8 Planner | 2012-07-09 A |  |  | 0% → 95% | 23.5d → 22.35d |  | was named Function 8 Planner, Report |
| 43 | Function 9 Project Eye | 2012-07-13 A |  |  | 0% → 90% | 21.5d → 20.35d |  | was named Function 9 Dashboard, Project Eye |
| 44 | Function 10 Receipt | 2012-07-13 A |  |  | 0% → 25% | 0d → 10.94d |  | was named Function 10 Planner, Report |
| 47 | Modify if needed | 2012-07-18 → 2012-07-19 A (+1d) | 2012-07-19 → 2012-07-20 (+1d) |  | 0% → 60% | 0d → 9.74d | 45 → 46 |  |
| 48 | Integration | 2012-07-19 → 2012-07-20 A (+1d) | 2012-07-23 → 2012-07-24 (+1d) |  | 0% → 80% | 0d → 8.14d |  |  |
| 49 | Study and develop Android Version | 2012-07-23 → 2012-07-24 A (+1d) | 2012-07-27 → 2012-07-30 (+3d) |  | 0% → 70% | 0d → 5.34d |  |  |
| 50 | **Testing** | 2012-07-27 A | 2012-08-13 → 2012-08-14 (+1d) | 11.5d → 12.35d | 0% → 90% |  |  |  |
| 51 | Create Testing plan + Document | 2012-07-27 A | 2012-07-27 → 2012-07-30 (+3d) |  | 0% → 80% | 0d → 11d |  | was named Create Testing plan |
| 52 | **Unit Testing** | 2012-07-30 A | 2012-08-06 → 2012-08-07 A (+1d) |  | 0% → 100% | 0d → none |  |  |
| 53 | Create Test case | 2012-07-30 A | 2012-07-30 → 2012-07-31 A (+1d) |  | 0% → 100% | 0d → none |  |  |
| 54 | Review test case online | 2012-07-31 A | 2012-07-31 → 2012-08-01 A (+1d) |  | 0% → 100% | 0d → none |  |  |
| 55 | Create Test code | 2012-08-01 A | 2012-08-01 → 2012-08-02 A (+1d) |  | 0% → 100% | 0d → none |  |  |
| 56 | Review Test code and Unit Test Statistical Report | 2012-08-02 A | 2012-08-02 → 2012-08-03 A (+1d) |  | 0% → 100% | 0d → none |  |  |
| 57 | Modify code (fix bug, if any) | 2012-08-02 → 2012-08-03 A (+1d) | 2012-08-03 → 2012-08-06 A (+3d) |  | 0% → 100% | 0d → none |  |  |
| 58 | Re-test modified code | 2012-08-03 → 2012-08-06 A (+3d) | 2012-08-03 → 2012-08-06 A (+3d) |  | 0% → 100% | 0d → none |  |  |
| 59 | Assess Unit Testing (Write Test Case, Test Code, Test Report) | 2012-08-06 A | 2012-08-06 → 2012-08-07 A (+1d) |  | 0% → 100% | 0d → none |  |  |
| 60 | **Integration Testing** | 2012-08-06 → 2012-08-07 A (+1d) | 2012-08-13 → 2012-08-14 (+1d) |  | 0% → 80% |  |  |  |
| 61 | Create Test case | 2012-08-06 → 2012-08-07 A (+1d) | 2012-08-07 → 2012-08-08 A (+1d) |  | 0% → 100% | 0d → none |  |  |
| 62 | Review test case online | 2012-08-07 → 2012-08-08 A (+1d) | 2012-08-08 → 2012-08-09 A (+1d) |  | 0% → 100% | 0d → none |  |  |
| 63 | Create Test code | 2012-08-08 → 2012-08-09 A (+1d) | 2012-08-09 → 2012-08-10 A (+1d) |  | 0% → 100% | 0d → none |  |  |
| 64 | Review Test code and Unit Test Statistical Report | 2012-08-09 → 2012-08-10 A (+1d) | 2012-08-09 → 2012-08-10 A (+1d) |  | 0% → 100% | 0d → none |  |  |
| 65 | Modify code (fix bug, if any) | 2012-08-10 A | 2012-08-10 → 2012-08-13 (+3d) |  | 0% → 90% |  |  |  |
| 66 | Re-test modified code |  | 2012-08-13 → 2012-08-14 (+1d) |  |  |  |  |  |
| 67 | Assess Unit Testing (Write Test Case, Test Code, Test Report) | 2012-08-13 → 2012-08-14 (+1d) | 2012-08-13 → 2012-08-14 (+1d) |  |  |  |  |  |
| 68 | Monitoring and Controlling | 2012-05-16 A |  |  | 0% → 75% | 6d → 6.85d |  |  |
| 69 | **Termination** |  | 2012-08-20 → 2012-08-21 (+1d) |  |  |  |  |  |
| 70 | Milestone assessment |  | 2012-08-15 → 2012-08-16 (+1d) |  |  |  |  |  |
| 71 | Deployment |  | 2012-08-20 → 2012-08-21 (+1d) |  |  |  |  |  |
