# OJTFU_K2_DetailedPlan_Portlet_v0.3

How a schedule from MS Project changed from version to version. A marks actual dates.

## Version 1 (saved 2012-05-10)

Note of the change: Add project plan + estimation files

| ID | WBS | Task | Duration | Start | Finish | Predecessors | Total float | Constraint |
| --- | --- | --- | --- | --- | --- | --- | --- | --- |
| 1 | 1 | **OOPMS** | 90d | 2012-05-07 | 2012-09-07 |  | 0d |  |
| 2 | 1.1 | **Initiation** | 1.5d | 2012-05-07 | 2012-05-08 |  | 0d |  |
| 3 |  | Add temp | 4h | 2012-05-07 | 2012-05-07 |  | 0d | start no earlier than 2012-05-07 |
| 4 |  | Kick-off meeting | 3h | 2012-05-07 | 2012-05-07 | 3 | 0d | start no earlier than 2012-03-12 |
| 5 |  | Introduce overview about Eclipse plug-in development | 2h | 2012-05-07 | 2012-05-08 | 4 | 0d |  |
| 6 |  | Introduce overview about Android development | 3h | 2012-05-08 | 2012-05-08 | 5 | 0d |  |
| 7 | 1.2 | **Planning** | 2.5d | 2012-05-08 | 2012-05-10 | 2 | 0d |  |
| 8 |  | Develop scope statement | 4h | 2012-05-08 | 2012-05-08 |  | 2d |  |
| 9 |  | Create WBS | 4h | 2012-05-08 | 2012-05-08 |  | 0d |  |
| 10 |  | Develop and refine other plans | 2d | 2012-05-09 | 2012-05-10 | 9 | 0d |  |
| 11 | 1.3 | **Solution** | 8d | 2012-05-11 | 2012-05-22 | 7 | 0d |  |
| 12 | 1.3.1 | **Develop functional specifications** | 2d | 2012-05-11 | 2012-05-14 |  | 0d |  |
| 13 |  | Create SRS | 2d | 2012-05-11 | 2012-05-14 |  | 0d | start no earlier than 2012-05-10 |
| 14 | 1.3.2 | **Develop prototype based on functional specifications** | 4d | 2012-05-15 | 2012-05-18 | 13 | 0d |  |
| 15 |  | ScreenDesign | 2d | 2012-05-15 | 2012-05-16 |  | 2d | finish no earlier than 2011-05-20 |
| 16 |  | Activity Diagram | 2d | 2012-05-17 | 2012-05-18 | 15 | 2d | start no earlier than 2011-05-20 |
| 17 |  | Sequence Diagram | 2d | 2012-05-15 | 2012-05-16 |  | 4d | start no earlier than 2011-05-20 |
| 18 |  | DDD | 4d | 2012-05-15 | 2012-05-18 |  | 0d | start no earlier than 2011-05-20 |
| 19 |  | Review functional specifications (Offline) | 1d | 2012-05-21 | 2012-05-21 | 18 | 0d | start no earlier than 2011-05-23 |
| 20 |  | Assess Understand the requirement | 1d | 2012-05-22 | 2012-05-22 | 19 | 0d |  |
| 21 | 1.4 | **Construction** | 72d | 2012-05-23 | 2012-08-30 | 11 | 0d |  |
| 22 | 1.4.1 | **Development** | 42d | 2012-05-23 | 2012-07-19 |  | 0d |  |
| 23 |  | Add temp | 4h | 2012-05-23 | 2012-05-23 | 11 | 0d |  |
| 24 |  | Add temp | 23d | 2012-05-23 | 2012-06-25 | 23 | 0d |  |
| 25 |  | Create coding plan | 4h | 2012-06-25 | 2012-06-25 | 24 | 0d |  |
| 26 | 1.4.1.4 | **Development** | 11d | 2012-06-26 | 2012-07-10 | 25 | 0d |  |
| 27 |  | Supermarket API use (Include working with Customers) | 9d | 2012-06-26 | 2012-07-06 |  | 0d |  |
| 28 | 1.4.1.4.2 | **Screen design** | 9d | 2012-06-26 | 2012-07-06 |  | 0d |  |
| 29 |  | Main Form | 2d | 2012-06-26 | 2012-06-27 |  | 0d |  |
| 30 |  | Map Form | 2d | 2012-06-28 | 2012-06-29 | 29 | 0d |  |
| 31 |  | Detail Market Form | 2d | 2012-07-02 | 2012-07-03 | 30 | 0d |  |
| 32 |  | Product List Form | 2d | 2012-07-04 | 2012-07-05 | 31 | 0d |  |
| 33 |  | Cart Form | 1d | 2012-07-06 | 2012-07-06 | 32 | 0d |  |
| 34 |  | Database Design | 5d | 2012-06-26 | 2012-07-02 |  | 0d |  |
| 35 | 1.4.1.4.4 | **Functions code** | 6d | 2012-07-03 | 2012-07-10 |  | 0d |  |
| 36 |  | Function View main function | 2d | 2012-07-03 | 2012-07-04 | 34 | 0d |  |
| 37 |  | Function View supermarket Map | 2d | 2012-07-05 | 2012-07-06 | 36 | 0d |  |
| 38 |  | Function View Detail infor | 2d | 2012-07-09 | 2012-07-10 | 37 | 0d |  |
| 39 |  | Function Display list of Products | 2d | 2012-07-03 | 2012-07-04 | 34 | 0d |  |
| 40 |  | Function Search | 2d | 2012-07-05 | 2012-07-06 | 39 | 0d |  |
| 41 |  | Function Buy | 2d | 2012-07-09 | 2012-07-10 | 40 | 0d |  |
| 42 |  | Function Check out shopping cart | 2d | 2012-07-09 | 2012-07-10 | 28 | 0d |  |
| 43 |  | Function Submit shopping cart | 2d | 2012-07-09 | 2012-07-10 | 27 | 0d |  |
| 44 |  | Review code offline | 2d | 2012-07-11 | 2012-07-12 | 35 | 0d |  |
| 45 |  | Modify if needed | 2d | 2012-07-13 | 2012-07-16 | 44 | 0d |  |
| 46 |  | Integration | 3d | 2012-07-17 | 2012-07-19 | 45 | 0d |  |
| 47 | 1.4.2 | **Testing** | 30d | 2012-07-20 | 2012-08-30 | 46 | 0d |  |
| 48 |  | Add temp | 4h | 2012-07-20 | 2012-07-20 | 35 | 0d |  |
| 49 |  | Add temp | 13d | 2012-07-20 | 2012-08-08 | 48 | 0d |  |
| 50 |  | Create Testing plan | 4h | 2012-08-08 | 2012-08-08 | 49 | 0d | start no earlier than 2011-05-30 |
| 51 | 1.4.2.4 | **Unit Testing** | 8d | 2012-08-09 | 2012-08-20 |  | 0d |  |
| 52 |  | Create Test case | 1d | 2012-08-09 | 2012-08-09 | 50 | 0d |  |
| 53 |  | Review test case online | 4h | 2012-08-10 | 2012-08-10 | 52 | 0d |  |
| 54 |  | Create Test code | 2d | 2012-08-10 | 2012-08-14 | 53 | 0d |  |
| 55 |  | Review Test code and Unit Test Statistical Report | 4h | 2012-08-14 | 2012-08-14 | 54 | 0d |  |
| 56 |  | Modify code (fix bug, if any) | 2d | 2012-08-15 | 2012-08-16 | 55 | 0d |  |
| 57 |  | Re-test modified code | 1d | 2012-08-17 | 2012-08-17 | 56 | 0d |  |
| 58 |  | Assess Unit Testing (Write Test Case, Test Code, Test Report) | 1d | 2012-08-20 | 2012-08-20 | 57 | 0d |  |
| 59 | 1.4.2.5 | **Integration Testing** | 8d | 2012-08-21 | 2012-08-30 |  | 0d |  |
| 60 |  | Create Test case | 1d | 2012-08-21 | 2012-08-21 | 46, 58 | 0d |  |
| 61 |  | Review test case online | 4h | 2012-08-22 | 2012-08-22 | 60 | 0d |  |
| 62 |  | Create Test code | 2d | 2012-08-22 | 2012-08-24 | 61 | 0d |  |
| 63 |  | Review Test code and Unit Test Statistical Report | 4h | 2012-08-24 | 2012-08-24 | 62 | 0d |  |
| 64 |  | Modify code (fix bug, if any) | 2d | 2012-08-27 | 2012-08-28 | 63 | 0d |  |
| 65 |  | Re-test modified code | 1d | 2012-08-29 | 2012-08-29 | 64 | 0d |  |
| 66 |  | Assess Unit Testing (Write Test Case, Test Code, Test Report) | 1d | 2012-08-30 | 2012-08-30 | 65 | 0d |  |
| 67 |  | Monitoring and Controlling | 48d | 2012-05-11 | 2012-07-17 | 7 | 30d | start no earlier than 2012-03-16 |
| 68 | 1.6 | **Termination** | 6d | 2012-08-31 | 2012-09-07 | 21 | 0d |  |
| 69 |  | Milestone assessment | 3d | 2012-08-31 | 2012-09-04 |  | 0d |  |
| 70 |  | Deployment | 3d | 2012-09-05 | 2012-09-07 | 69 | 0d |  |

## Version 2 (saved 2012-05-15)

Last finish stays 2012-09-07.

Added:

| ID | Task | Duration | Start | Finish | Predecessors |
| --- | --- | --- | --- | --- | --- |
| 12 | Report 1 | 3d | 2012-05-11 | 2012-05-15 | 7 |
| 13 | Study Requirements | 3d | 2012-05-16 | 2012-05-18 | 12 |

Changed:

| ID | Task | Start | Finish | Duration | Total float | Predecessors | Other |
| --- | --- | --- | --- | --- | --- | --- | --- |
| 2 | **Initiation** |  |  |  |  |  | resources All team members → none |
| 9 | Create WBS |  | 2012-05-08 → 2012-05-10 (+2d) | 4h → 2d |  |  |  |
| 10 | Develop and refine other plans | 2012-05-09 → 2012-05-10 (+1d) |  | 2d → 4h |  |  |  |
| 11 | **Solution** |  | 2012-05-22 → 2012-05-30 (+8d) | 8d → 14d |  |  |  |
| 14 | **Develop functional specifications** | 2012-05-11 → 2012-05-21 (+10d) | 2012-05-14 → 2012-05-22 (+8d) |  |  |  |  |
| 15 | Create SRS | 2012-05-11 → 2012-05-21 (+10d) | 2012-05-14 → 2012-05-22 (+8d) |  |  | none → 13 | resources VienBN → none |
| 16 | **Develop prototype based on functional specifications** | 2012-05-15 → 2012-05-23 (+8d) | 2012-05-18 → 2012-05-28 (+10d) |  |  |  |  |
| 17 | ScreenDesign | 2012-05-15 → 2012-05-23 (+8d) | 2012-05-16 → 2012-05-24 (+8d) |  |  |  | resources NhatVM → none |
| 18 | Activity Diagram | 2012-05-17 → 2012-05-25 (+8d) | 2012-05-18 → 2012-05-28 (+10d) |  |  |  | resources NhatVM → none |
| 19 | Sequence Diagram | 2012-05-15 → 2012-05-23 (+8d) | 2012-05-16 → 2012-05-24 (+8d) |  |  |  | resources DuyND → none |
| 20 | DDD | 2012-05-15 → 2012-05-23 (+8d) | 2012-05-18 → 2012-05-28 (+10d) |  |  |  | resources TrietNM → none |
| 21 | Review functional specifications (Offline) | 2012-05-21 → 2012-05-29 (+8d) | 2012-05-21 → 2012-05-29 (+8d) |  |  |  | resources All team members → none |
| 22 | Assess Understand the requirement | 2012-05-22 → 2012-05-30 (+8d) | 2012-05-22 → 2012-05-30 (+8d) |  |  |  | resources All team members → none |
| 23 | **Construction** | 2012-05-23 → 2012-05-31 (+8d) |  | 72d → 66d |  |  |  |
| 24 | **Development** | 2012-05-23 → 2012-05-31 (+8d) | 2012-07-19 → 2012-07-24 (+5d) | 42d → 39d |  |  |  |
| 25 | Add temp | 2012-05-23 → 2012-05-31 (+8d) | 2012-05-23 → 2012-05-31 (+8d) |  |  |  |  |
| 26 | Add temp | 2012-05-23 → 2012-05-31 (+8d) | 2012-06-25 → 2012-06-28 (+3d) | 23d → 20d |  |  |  |
| 27 | Create coding plan | 2012-06-25 → 2012-06-28 (+3d) | 2012-06-25 → 2012-06-28 (+3d) |  |  |  | resources All team members → none |
| 28 | **Development** | 2012-06-26 → 2012-06-29 (+3d) | 2012-07-10 → 2012-07-13 (+3d) |  |  |  |  |
| 29 | Study In Android | 2012-06-26 → 2012-06-29 (+3d) | 2012-07-06 → 2012-07-11 (+5d) |  |  |  | was named Supermarket API use (Include working with Customers); resources VienBN → none |
| 30 | **Screen design** | 2012-06-26 → 2012-06-29 (+3d) | 2012-07-06 → 2012-07-11 (+5d) |  |  |  | resources NhatVM → none |
| 31 | 2 Pages | 2012-06-26 → 2012-06-29 (+3d) | 2012-06-27 → 2012-07-02 (+5d) |  |  |  | was named Main Form |
| 32 | 2 Pages | 2012-06-28 → 2012-07-03 (+5d) | 2012-06-29 → 2012-07-04 (+5d) |  |  |  | was named Map Form |
| 33 | 2 Pages | 2012-07-02 → 2012-07-05 (+3d) | 2012-07-03 → 2012-07-06 (+3d) |  |  |  | was named Detail Market Form |
| 34 | 2 Pages | 2012-07-04 → 2012-07-09 (+5d) | 2012-07-05 → 2012-07-10 (+5d) |  |  |  | was named Product List Form |
| 35 | 2 Pages | 2012-07-06 → 2012-07-11 (+5d) | 2012-07-06 → 2012-07-11 (+5d) |  |  |  | was named Cart Form |
| 36 | Database Design | 2012-06-26 → 2012-06-29 (+3d) | 2012-07-02 → 2012-07-05 (+3d) |  |  |  | resources TrietNM; DuyND → none |
| 37 | **Functions code** | 2012-07-03 → 2012-07-06 (+3d) | 2012-07-10 → 2012-07-13 (+3d) |  |  |  |  |
| 38 | Function 1 | 2012-07-03 → 2012-07-06 (+3d) | 2012-07-04 → 2012-07-09 (+5d) |  |  |  | was named Function View main function; resources DuyND → none |
| 39 | Function 2 | 2012-07-05 → 2012-07-10 (+5d) | 2012-07-06 → 2012-07-11 (+5d) |  |  |  | was named Function View supermarket Map; resources DuyND → none |
| 40 | Function 3 | 2012-07-09 → 2012-07-12 (+3d) | 2012-07-10 → 2012-07-13 (+3d) |  |  |  | was named Function View Detail infor; resources TrietNM → none |
| 41 | Function 4 | 2012-07-03 → 2012-07-06 (+3d) | 2012-07-04 → 2012-07-09 (+5d) |  |  |  | was named Function Display list of Products; resources TrietNM → none |
| 42 | Function 5 | 2012-07-05 → 2012-07-10 (+5d) | 2012-07-06 → 2012-07-11 (+5d) |  |  |  | was named Function Search; resources TrietNM → none |
| 43 | Function 6 | 2012-07-09 → 2012-07-12 (+3d) | 2012-07-10 → 2012-07-13 (+3d) |  |  |  | was named Function Buy; resources TrietNM → none |
| 44 | Function 7 | 2012-07-09 → 2012-07-12 (+3d) | 2012-07-10 → 2012-07-13 (+3d) |  |  |  | was named Function Check out shopping cart; resources NhatVM → none |
| 45 | Function 8 | 2012-07-09 → 2012-07-12 (+3d) | 2012-07-10 → 2012-07-13 (+3d) |  |  |  | was named Function Submit shopping cart; resources VienBN → none |
| 46 | Review code offline | 2012-07-11 → 2012-07-16 (+5d) | 2012-07-12 → 2012-07-17 (+5d) |  |  |  | resources All team members → none |
| 47 | Modify if needed | 2012-07-13 → 2012-07-18 (+5d) | 2012-07-16 → 2012-07-19 (+3d) |  |  |  |  |
| 48 | Integration | 2012-07-17 → 2012-07-20 (+3d) | 2012-07-19 → 2012-07-24 (+5d) |  |  |  | resources All team members → none |
| 49 | **Testing** | 2012-07-20 → 2012-07-25 (+5d) |  | 30d → 27d |  |  |  |
| 50 | Add temp | 2012-07-20 → 2012-07-25 (+5d) | 2012-07-20 → 2012-07-25 (+5d) |  |  |  |  |
| 51 | Add temp | 2012-07-20 → 2012-07-25 (+5d) |  | 13d → 10d |  |  |  |
| 52 | Create Testing plan |  |  |  |  |  | resources All team members → none |
| 62 | Create Test case |  |  |  |  |  | resources All team members → none |
| 63 | Review test case online |  |  |  |  |  | resources All team members → none |
| 64 | Create Test code |  |  |  |  |  | resources All team members → none |
| 65 | Review Test code and Unit Test Statistical Report |  |  |  |  |  | resources All team members → none |
| 66 | Modify code (fix bug, if any) |  |  |  |  |  | resources All team members → none |
| 67 | Re-test modified code |  |  |  |  |  | resources All team members → none |
| 68 | Assess Unit Testing (Write Test Case, Test Code, Test Report) |  |  |  |  |  | resources All team members → none |
| 69 | Monitoring and Controlling |  |  |  | 30d → 38d |  | resources DuyND → none |
| 70 | **Termination** |  |  |  |  |  | resources All team members → none |
